Schedule from MS Project, 2017-03-29 to 2017-04-21, A marks actual dates.

## Calendars

- 标准: Mon-Fri 08:00-12:00, 13:00-17:00; Sat-Sun off. Exceptions (off unless hours are given): 2017-04-01 08:00-12:00, 13:00-17:00 (清明前), 2017-04-02 to 2017-04-04 (清明假).

## Resources

| Resource |
| --- |
| 王泽志 |
| 林凯 |
| 周翔 |

## Schedule

| ID | WBS | Task | Type | Duration | Start | Finish | Predecessors | Complete | Remaining | Total slack | Constraint | Resources | Work | Actual work |
| --- | --- | --- | --- | --- | --- | --- | --- | --- | --- | --- | --- | --- | --- | --- |
| 1 | 1 | **发货单** |  | 0.5d? | 2017-03-30 | 2017-03-30 |  |  |  | 15.5d |  |  | 8h |  |
| 2 | 1.1 | LES 发货单列表 |  | 0.5d? | 2017-03-30 | 2017-03-30 |  |  |  | 15.5d | start no earlier than 2017-03-30 | 王泽志 | 4h |  |
| 3 | 1.2 | 手工发货单列表 |  | 0.5d? | 2017-03-30 | 2017-03-30 |  |  |  | 15.5d | start no earlier than 2017-03-30 | 王泽志 | 4h |  |
| 4 | 2 | **收货单** |  | 1.5d | 2017-03-29 | 2017-03-30 |  |  |  | 15.5d |  |  | 8h |  |
| 5 | 2.1 | 手工收货单列表 |  | 0.5d | 2017-03-29 | 2017-03-29 |  |  |  | 16.5d |  | 林凯 | 4h |  |
| 6 | 2.2 | LES收货单列表 |  | 0.5d | 2017-03-30 | 2017-03-30 |  |  |  | 15.5d | start no earlier than 2017-03-30 | 林凯 | 4h |  |
| 7 | 3 | **内部接口定义及确认** |  | 2d? | 2017-03-30 A | 2017-03-31 |  | 33% | 1.33d? | 14d |  |  | 12h | 4h |
| 8 | 3.1 | 运行报错处理 |  | 1d? | 2017-03-30 | 2017-03-30 |  |  |  | 15d | start no earlier than 2017-03-30 | 周翔 [25%] | 2h |  |
| 9 | 3.2 | 工作计划安排确认 |  | 1d? | 2017-03-30 | 2017-03-30 |  |  |  | 15d | start no earlier than 2017-03-30 | 周翔 [75%] | 6h |  |
| 10 | 3.3 | 内部接口定义及确认 |  | 1d? | 2017-03-31 A | 2017-03-31 A | 8 | 100% |  |  | start no earlier than 2017-03-31 | 周翔 [50%] | 4h | 4h |
| 11 | 4 | **库存单据** |  | 2d? | 2017-03-31 A | 2017-04-01 A |  | 100% |  |  |  |  | 16h | 16h |
| 12 | 4.1 | 库存调整申请单 |  | 1d? | 2017-03-31 A | 2017-03-31 A |  | 100% |  |  | start no earlier than 2017-03-31 | 林凯 [50%] | 4h | 4h |
| 13 | 4.2 | 盘库申请单 |  | 1d? | 2017-03-31 A | 2017-03-31 A |  | 100% |  |  | start no earlier than 2017-03-31 | 林凯 [50%] | 4h | 4h |
| 14 | 4.3 | 盘库清单 |  | 1d? | 2017-04-01 A | 2017-04-01 A |  | 100% |  |  | start no earlier than 2017-04-01 | 林凯 [50%] | 4h | 4h |
| 15 | 4.4 | 移库申请单 |  | 1d? | 2017-04-01 A | 2017-04-01 A |  | 100% |  |  | start no earlier than 2017-04-01 | 林凯 [50%] | 4h | 4h |
| 16 | 5 | **发货单** |  | 0.5d | 2017-03-31 A | 2017-03-31 A |  | 100% |  |  |  |  | 8h | 8h |
| 17 | 5.1 | LES 生成收货单 |  | 0.5d | 2017-03-31 A | 2017-03-31 A |  | 100% |  |  | start no earlier than 2017-03-31 | 王泽志 | 4h | 4h |
| 18 | 5.2 | LES 生成货货单 |  | 0.5d | 2017-03-31 A | 2017-03-31 A |  | 100% |  |  | start no earlier than 2017-03-31 | 王泽志 | 4h | 4h |
| 19 | 6 | **台账** |  | 2d? | 2017-04-05 A | 2017-04-06 |  | 81% | 0.38d? | 11d |  |  | 16h | 13h |
| 20 | 6.1 | 零件库存查询 |  | 1d? | 2017-04-05 A | 2017-04-05 |  | 75% | 0.25d? | 12d | start no earlier than 2017-04-05 | 林凯 [50%] | 4h | 3h |
| 21 | 6.2 | 台账初始化代码调整 | manual | 2d | 2017-04-05 A | 2017-04-06 |  | 75% | 0.5d |  | start no earlier than 2017-04-05 | 林凯 | 8h | 6h |
| 22 | 6.3 | 积累问题处理 |  | 1d? | 2017-04-06 A | 2017-04-06 A |  | 100% |  |  | start no earlier than 2017-04-06 | 林凯 [50%] | 4h | 4h |
| 23 | 7 | **人员-标签** |  | 1d? | 2017-04-05 A | 2017-04-05 |  | 38% | 0.62d? | 12d |  |  | 8h | 3h |
| 24 | 7.1 | 人员-标签关系 |  | 1d? | 2017-04-05 A | 2017-04-05 |  | 75% | 0.25d? | 12d | start no earlier than 2017-04-05 | 王泽志 [50%] | 4h | 3h |
| 25 | 7.2 | 根据标签查询登录人接口 |  | 1d? | 2017-04-05 | 2017-04-05 |  |  |  | 12d | start no earlier than 2017-04-05 | 王泽志 [50%] | 4h |  |

| ID | WBS | Task | Duration | Start | Finish | Complete | Remaining | Total slack | Constraint | Resources | Work | Actual work |
| --- | --- | --- | --- | --- | --- | --- | --- | --- | --- | --- | --- | --- |
| 26 | 8 | **任务流程定义** | 1d? | 2017-04-06 A | 2017-04-06 A | 100% |  |  |  |  | 8h | 8h |
| 27 | 8.1 | 任务流程定义 | 1d? | 2017-04-06 A | 2017-04-06 A | 100% |  |  | start no earlier than 2017-04-06 | 王泽志 | 8h | 8h |
| 28 | 9 | 根据收货单生成收货任务 | 3d | 2017-04-01 A | 2017-04-06 | 75% | 0.75d | 11d | start no earlier than 2017-04-01 | 周翔 | 24h | 18h |
| 29 | 10 | 预拣货任务定义 | 1d? | 2017-04-07 A | 2017-04-07 A | 100% |  |  | start no earlier than 2017-04-07 | 王泽志 | 8h | 8h |
| 30 | 11 | **运单基础数据明细** | 1d? | 2017-04-07 A | 2017-04-07 A | 100% |  |  |  |  | 8h | 8h |
| 31 | 11.1 | 车辆信息 | 1d? | 2017-04-07 A | 2017-04-07 A | 100% |  |  | start no earlier than 2017-04-07 | 林凯 [50%] | 4h | 4h |
| 32 | 11.2 | 运单信息 | 1d? | 2017-04-07 A | 2017-04-07 A | 100% |  |  | start no earlier than 2017-04-07 | 林凯 [25%] | 2h | 2h |
| 33 | 11.3 | 运单信息明细 | 1d? | 2017-04-07 A | 2017-04-07 A | 100% |  |  | start no earlier than 2017-04-07 | 林凯 [25%] | 2h | 2h |
| 34 | 12 | **根据单据生成任务** | 9d? | 2017-04-07 A | 2017-04-19 | 46% | 4.86d? | 2d |  |  | 152h | 70h |
| 35 | 12.1 | 根据收货单生成上架任务 | 4d? | 2017-04-10 A | 2017-04-13 | 50% | 2d? | 6d | finish no earlier than 2017-04-13 | 林凯 | 32h | 16h |
| 36 | 12.2 | 根据盘库申请单生成盘库任务 | 4d? | 2017-04-10 A | 2017-04-13 | 75% | 1d? | 6d | finish no earlier than 2017-04-13 | 王泽志 | 32h | 24h |
| 37 | 12.3 | 根据预拣货定义生成预拣货任务 | 4d? | 2017-04-07 A | 2017-04-12 | 50% | 2d? | 7d | finish no earlier than 2017-04-12 | 周翔 | 32h | 16h |
| 38 | 12.4 | 根据发货单,预拣货单生成发货任务 | 4d? | 2017-04-14 | 2017-04-19 |  |  | 2d | finish no earlier than 2017-04-19 | 王泽志 | 32h |  |
| 39 | 12.5 | 根据移库申请单生成移库任务 | 1d? | 2017-04-14 A | 2017-04-14 | 25% | 0.75d? | 5d | start no earlier than 2017-04-14 | 林凯 | 8h | 2h |
| 40 | 12.6 | 取消任务,并新增任务 | 2d? | 2017-04-13 A | 2017-04-14 | 75% | 0.5d? | 5d | finish no earlier than 2017-04-14 | 周翔 | 16h | 12h |
| 41 | 13 | **根据任务变更数据** | 4d? | 2017-04-17 | 2017-04-20 |  |  | 1d |  |  | 48h |  |
| 42 | 13.1 | 根据收货任务变更台账,零件 | 1d? | 2017-04-17 | 2017-04-17 |  |  | 4d | start no earlier than 2017-04-17 | 林凯 | 8h |  |
| 43 | 13.2 | 根据上货任务变更库存 | 1d? | 2017-04-18 | 2017-04-18 |  |  | 3d | start no earlier than 2017-04-18 | 林凯 | 8h |  |
| 44 | 13.3 | 根据盘点任务生成盘库清单 | 1d? | 2017-04-19 | 2017-04-19 |  |  | 2d | start no earlier than 2017-04-19 | 林凯 | 8h |  |
| 45 | 13.4 | 根据预拣货变更库存 | 1d? | 2017-04-17 | 2017-04-17 |  |  | 4d | start no earlier than 2017-04-17 | 周翔 | 8h |  |
| 46 | 13.5 | 根据发货任务变更库存 | 1d? | 2017-04-20 | 2017-04-20 |  |  | 1d | start no earlier than 2017-04-20 | 王泽志 | 8h |  |
| 47 | 13.6 | 根据库存调整申请单变更库存 | 1d? | 2017-04-20 | 2017-04-20 |  |  | 1d | start no earlier than 2017-04-20 | 林凯 | 8h |  |
| 48 | 14 | 手持接口的实现及单元测试 | 4d? | 2017-04-18 | 2017-04-21 |  |  | 0d | finish no earlier than 2017-04-21 | 周翔 | 32h |  |
| 49 | 15 | 已完成功能的测试和调整 | 1d? | 2017-04-21 | 2017-04-21 |  |  | 0d | start no earlier than 2017-04-21 | 林凯; 王泽志 | 16h |  |
